# Sistema de Correspondencia Institucional

Schedule from MS Project XML, 2026-10-15 to 2026-11-25.

## Calendars

- Académico lunes a viernes 8 horas: Mon-Fri 08:00-12:00, 13:00-17:00; Sat-Sun off.

## Resources

| Resource |
| --- |
| Mathew Bruckner Becerra |
| Russel |

## Schedule

| ID | WBS | Task | Type | Duration | Start | Finish | Predecessors | Total slack | Free slack | Constraint | Resources | Work |
| --- | --- | --- | --- | --- | --- | --- | --- | --- | --- | --- | --- | --- |
| 1 | 1 | **Análisis y preparación** |  | 3d | 2026-10-15 | 2026-10-19 |  |  |  |  |  |  |
| 2 | 1.1 | A / Delimitar alcance y flujo |  | 1d | 2026-10-15 | 2026-10-15 |  | 0d |  |  | Mathew Bruckner Becerra; Russel | 16h |
| 3 | 1.2 | B / Especificar historias y casos de uso |  | 2d | 2026-10-16 | 2026-10-19 | 2 | 0d |  |  | Mathew Bruckner Becerra | 16h |
| 4 | 1.3 | T / Preparar repositorio y CI inicial |  | 1d | 2026-10-16 | 2026-10-16 | 2 | 1d |  |  | Russel | 8h |
| 5 | 2 | **Diseño** |  | 2d | 2026-10-20 | 2026-10-21 |  |  |  |  |  |  |
| 6 | 2.1 | C / Diseñar datos API y mockups |  | 2d | 2026-10-20 | 2026-10-21 | 3, 4 | 0d |  |  | Mathew Bruckner Becerra; Russel | 32h |
| 7 | 3 | **Web y API** |  | 15d | 2026-10-22 | 2026-11-11 |  |  |  |  |  |  |
| 8 | 3.1 | D / Construir núcleo web y API |  | 5d | 2026-10-22 | 2026-10-28 | 6 | 0d |  |  | Mathew Bruckner Becerra; Russel | 80h |
| 9 | 3.2 | E / Digitalizar y proteger archivos |  | 5d | 2026-10-29 | 2026-11-04 | 8 | 0d |  |  | Mathew Bruckner Becerra | 40h |
| 10 | 3.3 | F / Implementar recorrido web |  | 5d | 2026-11-05 | 2026-11-11 | 9 | 0d |  |  | Mathew Bruckner Becerra | 40h |
| 11 | 4 | **Android** |  | 9d | 2026-10-29 | 2026-11-10 |  |  |  |  |  |  |
| 12 | 4.1 | M / Construir acceso y bandeja Android |  | 4d | 2026-10-29 | 2026-11-03 | 8 | 2d | 1d |  | Russel | 32h |
| 13 | 4.2 | N / Implementar operaciones Android |  | 4d | 2026-11-05 | 2026-11-10 | 9, 12 | 1d |  |  | Russel | 32h |
| 14 | 5 | **Integración y calidad** |  | 5d | 2026-11-12 | 2026-11-18 |  |  |  |  |  |  |
| 15 | 5.1 | G / Integrar y verificar el recorrido |  | 5d | 2026-11-12 | 2026-11-18 | 10, 13 | 0d |  |  | Mathew Bruckner Becerra; Russel | 80h |
| 16 | 6 | **Aceptación y entrega** |  | 5d | 2026-11-19 | 2026-11-25 |  |  |  |  |  |  |
| 17 | 6.1 | H / Validar aceptación y documentar |  | 3d | 2026-11-19 | 2026-11-23 | 15 | 0d |  |  | Mathew Bruckner Becerra; Russel | 48h |
| 18 | 6.2 | Z / Reserva y entrega final |  | 2d | 2026-11-24 | 2026-11-25 | 17 | 0d |  |  | Mathew Bruckner Becerra; Russel | 32h |
| 19 | 7.1 | Entrega 01 / 22/10/2026 | milestone | 0d | 2026-10-22 | 2026-10-22 | 2, 3, 4, 6 |  |  | start no earlier than 2026-10-22 |  |  |
| 20 | 7.2 | Entrega 02 / 29/10/2026 | milestone | 0d | 2026-10-29 | 2026-10-29 | 8 |  |  | start no earlier than 2026-10-29 |  |  |
| 21 | 7.3 | Entrega 03 / 05/11/2026 | milestone | 0d | 2026-11-05 | 2026-11-05 | 9, 12 |  |  | start no earlier than 2026-11-05 |  |  |
| 22 | 7.4 | Entrega 04 / 12/11/2026 | milestone | 0d | 2026-11-12 | 2026-11-12 | 10, 13 |  |  | start no earlier than 2026-11-12 |  |  |
| 23 | 7.5 | Entrega 05 / 19/11/2026 | milestone | 0d | 2026-11-19 | 2026-11-19 | 15 |  |  | start no earlier than 2026-11-19 |  |  |
| 24 | 7.6 | Entrega 06 / 25/11/2026 | milestone | 0d | 2026-11-25 | 2026-11-25 | 17, 18 |  |  | start no earlier than 2026-11-25 |  |  |

Notes:
- 2: Alcance, actores, estados y exclusiones. PERT a=1, m=1, b=1; tiempo esperado=1 días. Planificación propuesta; avance sin evidencia parte en 0 %.
- 3: Catálogo HU y CU con criterios verificables. PERT a=1, m=2, b=3; tiempo esperado=2 días. Planificación propuesta; avance sin evidencia parte en 0 %.
- 4: Estructura web, movil y docs; revisión y CI. PERT a=1, m=1, b=1; tiempo esperado=1 días. Planificación propuesta; avance sin evidencia parte en 0 %.
- 6: Modelo, contrato API y prototipos revisados. PERT a=1, m=2, b=3; tiempo esperado=2 días. Planificación propuesta; avance sin evidencia parte en 0 %.
- 8: Autenticación, permisos, catálogos y registro. PERT a=3, m=5, b=7; tiempo esperado=5 días. Planificación propuesta; avance sin evidencia parte en 0 %.
- 9: Adjuntos cifrados, acceso autorizado y QR. PERT a=3, m=5, b=7; tiempo esperado=5 días. Planificación propuesta; avance sin evidencia parte en 0 %.
- 10: Derivación, atención, respuesta, cierre y reporte. PERT a=3, m=5, b=7; tiempo esperado=5 días. Planificación propuesta; avance sin evidencia parte en 0 %.
- 12: Sesión, asignaciones y consulta desde móvil. PERT a=2, m=4, b=6; tiempo esperado=4 días. Planificación propuesta; avance sin evidencia parte en 0 %.
- 13: QR, recepción, cámara, atención y derivación. PERT a=2, m=4, b=6; tiempo esperado=4 días. Planificación propuesta; avance sin evidencia parte en 0 %.
- 15: Pruebas cruzadas, permisos, cifrado y restauración. PERT a=3, m=5, b=7; tiempo esperado=5 días. Planificación propuesta; avance sin evidencia parte en 0 %.
- 17: Manuales, versión candidata y demostración. PERT a=2, m=3, b=4; tiempo esperado=3 días. Planificación propuesta; avance sin evidencia parte en 0 %.
- 18: Correcciones de contingencia y versión final. PERT a=2, m=2, b=2; tiempo esperado=2 días. Planificación propuesta; avance sin evidencia parte en 0 %.
- 19: Diseño, requisitos y base técnica revisados. Inicio del núcleo.
- 20: Núcleo web/API, permisos, catálogos y registro; siguiente incremento iniciado.
- 21: Archivos protegidos, QR, consulta y acceso Android.
- 22: Derivación, recepción, atención, respuesta y cierre; operaciones móviles.
- 23: Recorrido integrado y pruebas; versión candidata para aceptación.
- 24: Aceptación, manuales, contingencias resueltas y entrega final.
